Schedule from MS Project, 2020-03-06 to 2020-05-15, A marks actual dates.
HP

## Calendars

- 标准: Mon-Sun 08:00-12:00, 13:00-17:00.

## Resources

| Resource |
| --- |
| 暴明坤 |
| 胡俊涛 |
| 叶柏威 |
| 夏欣怡 |
| 刘子渊 |
| 张雨濛 |

## Schedule

| ID | WBS | Task | Type | Duration | Start | Finish | Predecessors | Complete | Baseline start | Baseline finish | Baseline duration | Resources | Work | Actual work |
| --- | --- | --- | --- | --- | --- | --- | --- | --- | --- | --- | --- | --- | --- | --- |
| 1 | 1 | **软件项目计划** |  | 19d | 2020-03-06 A | 2020-03-24 A |  | 100% | 2020-03-06 | 2020-03-24 | 13d |  | 102.4h | 102.4h |
| 2 | 1.1 | 远程协作软件选择与使用 | manual | 1d | 2020-03-08 A | 2020-03-08 A |  | 100% | 2020-03-08 | 2020-03-08 | 1d | 暴明坤 [10%]; 胡俊涛 [10%]; 刘子渊 [10%]; 夏欣怡 [10%]; 叶柏威 [10%]; 张雨濛 [10%] | 4.8h | 4.8h |
| 3 | 1.2 | **项目提出** |  | 8d | 2020-03-06 A | 2020-03-13 A |  | 100% | 2020-03-06 | 2020-03-13 | 6d |  | 37.52h | 37.52h |
| 4 | 1.2.1 | 备选项目提出 | manual | 1d | 2020-03-06 A | 2020-03-06 A |  | 100% | 2020-03-06 | 2020-03-06 | 1d | 暴明坤 [12%]; 胡俊涛 [12%]; 刘子渊 [12%] | 2.88h | 2.88h |
| 5 | 1.2.2 | 项目确定及具体方案讨论 | manual | 3d | 2020-03-09 A | 2020-03-11 A |  | 100% | 2020-03-09 | 2020-03-11 | 3d | 暴明坤 [10%]; 胡俊涛 [10%]; 刘子渊 [10%]; 夏欣怡 [5%]; 叶柏威 [10%]; 张雨濛 [5%] | 12h | 12h |
| 6 | 1.2.3 | 线上会议(1) | manual | 1d | 2020-03-13 A | 2020-03-13 A | 2 | 100% | 2020-03-13 | 2020-03-13 | 1d | 暴明坤 [25%]; 胡俊涛 [25%]; 刘子渊 [25%]; 夏欣怡 [25%]; 叶柏威 [25%]; 张雨濛 [25%] | 12h | 12h |
| 7 | 1.2.4 | ppt制作与整合 | manual | 1d | 2020-03-13 A | 2020-03-13 A |  | 100% | 2020-03-13 | 2020-03-13 | 1d | 暴明坤 [12%]; 胡俊涛 [12%]; 夏欣怡 [12%]; 叶柏威 [12%] | 3.84h | 3.84h |
| 8 | 1.2.5 | ppt讲解 | manual | 1d | 2020-03-13 A | 2020-03-13 A | 7 | 100% | 2020-03-13 | 2020-03-13 | 1d | 暴明坤 [25%]; 胡俊涛 [12%]; 刘子渊 [12%]; 夏欣怡 [12%]; 叶柏威 [12%]; 张雨濛 [12%] | 6.8h | 6.8h |
| 9 | 1.3 | **项目修改与确定** |  | 7d | 2020-03-14 A | 2020-03-20 A |  | 100% | 2020-03-14 | 2020-03-20 | 5d |  | 33.12h | 33.12h |
| 10 | 1.3.1 | 修改方向讨论 | manual | 1d | 2020-03-14 A | 2020-03-14 A |  | 100% | 2020-03-14 | 2020-03-14 | 1d | 暴明坤 [12%]; 胡俊涛 [12%]; 刘子渊 [12%]; 夏欣怡 [12%]; 叶柏威 [12%]; 张雨濛 [12%] | 5.76h | 5.76h |
| 11 | 1.3.2 | 线上会议(2) | manual | 1d | 2020-03-15 A | 2020-03-15 A |  | 100% | 2020-03-15 | 2020-03-15 | 1d | 暴明坤 [25%]; 胡俊涛 [25%]; 刘子渊 [25%]; 夏欣怡 [25%]; 叶柏威 [25%]; 张雨濛 [25%] | 12h | 12h |
| 12 | 1.3.3 | 修改方案提出与确定 | manual | 1d | 2020-03-16 A | 2020-03-16 A | 10 | 100% | 2020-03-16 | 2020-03-16 | 1d | 暴明坤 [12%]; 胡俊涛 [12%]; 刘子渊 [12%]; 叶柏威 [12%] | 3.84h | 3.84h |
| 13 | 1.3.4 | 项目计划书撰写 | manual | 1d | 2020-03-17 A | 2020-03-17 A | 12 | 100% | 2020-03-17 | 2020-03-17 | 1d | 暴明坤 [20%]; 胡俊涛 [20%]; 刘子渊 [10%]; 叶柏威 [10%]; 张雨濛 [10%] | 5.6h | 5.6h |
| 14 | 1.3.5 | ppt制作与整合 | manual | 1d | 2020-03-20 A | 2020-03-20 A |  | 100% | 2020-03-20 | 2020-03-20 | 1d | 暴明坤 [25%] | 2h | 2h |
| 15 | 1.3.6 | ppt讲解 | manual | 1d | 2020-03-20 A | 2020-03-20 A | 14 | 100% | 2020-03-20 | 2020-03-20 | 1d | 暴明坤 [25%]; 胡俊涛 [12%]; 夏欣怡 [12%] | 3.92h | 3.92h |
| 16 | 1.4 | **人员分工及后续任务明确** |  | 1d | 2020-03-20 A | 2020-03-20 A |  | 100% | 2020-03-20 | 2020-03-20 | 1d |  | 5.76h | 5.76h |
| 17 | 1.4.1 | 线上会议(3) | manual | 1d | 2020-03-20 A | 2020-03-20 A |  | 100% | 2020-03-20 | 2020-03-20 | 1d | 暴明坤 [12%]; 胡俊涛 [12%]; 刘子渊 [12%]; 夏欣怡 [12%]; 叶柏威 [12%]; 张雨濛 [12%] | 5.76h | 5.76h |
| 18 | 1.5 | **其他工作** |  | 12d | 2020-03-13 A | 2020-03-24 A |  | 100% | 2020-03-13 | 2020-03-24 | 8d |  | 21.2h | 21.2h |
| 19 | 1.5.1 | 课程学习(1) | manual | 1d | 2020-03-13 A | 2020-03-13 A |  | 100% | 2020-03-13 | 2020-03-13 | 1d | 暴明坤 [12%]; 胡俊涛 [12%]; 刘子渊 [12%]; 夏欣怡 [12%]; 叶柏威 [12%]; 张雨濛 [12%] | 5.76h | 5.76h |
| 20 | 1.5.2 | 课程学习(2) | manual | 1d | 2020-03-20 A | 2020-03-20 A |  | 100% | 2020-03-20 | 2020-03-20 | 1d | 暴明坤 [12%]; 胡俊涛 [12%]; 刘子渊 [12%]; 夏欣怡 [12%]; 叶柏威 [12%]; 张雨濛 [12%] | 5.76h | 5.76h |
| 21 | 1.5.3 | node-red拓展节点原型开发 | manual | 2d | 2020-03-17 A | 2020-03-18 A |  | 100% | 2020-03-17 | 2020-03-18 | 2d | 暴明坤 [12%] | 1.92h | 1.92h |
| 22 | 1.5.4 | MSProject安装与学习 | manual | 2d | 2020-03-23 A | 2020-03-24 A |  | 100% | 2020-03-23 | 2020-03-24 | 2d | 夏欣怡 [12%] | 1.92h | 1.92h |
| 23 | 1.5.5 | 尝试实现输入同步机制和尝试Dashboard图表节点 | manual | 2d | 2020-03-18 A | 2020-03-19 A |  | 100% | 2020-03-18 | 2020-03-19 | 2d | 胡俊涛 [12%] | 1.92h | 1.92h |
| 24 | 1.5.6 | 域名申请 | manual | 1d | 2020-03-15 A | 2020-03-15 A |  | 100% | 2020-03-15 | 2020-03-15 | 1d | 暴明坤 [25%] | 2h | 2h |
| 25 | 1.5.7 | 会议及汇报记录 | manual | 6d | 2020-03-13 A | 2020-03-20 A |  | 100% | 2020-03-13 | 2020-03-20 | 6d | 张雨濛 [4%] | 1.92h | 1.92h |

| ID | WBS | Task | Type | Duration | Start | Finish | Predecessors | Complete | Actual start | Actual finish | Baseline start | Baseline finish | Baseline duration | Resources | Work | Actual work |
| --- | --- | --- | --- | --- | --- | --- | --- | --- | --- | --- | --- | --- | --- | --- | --- | --- |
| 26 | 2 | **软件需求分析** |  | 14d | 2020-03-21 A | 2020-04-03 A |  | 100% |  |  | 2020-03-21 | 2020-04-03 | 10d |  | 54.24h | 54.24h |
| 27 | 2.1 | **需求规格说明书** |  | 5d | 2020-03-21 A | 2020-03-25 A |  | 100% |  |  | 2020-03-21 | 2020-03-25 | 3d |  | 10.72h | 10.72h |
| 28 | 2.1.1 | 需求规格说明书框架 | manual | 1d | 2020-03-21 A | 2020-03-21 A |  | 100% |  |  | 2020-03-21 | 2020-03-21 | 1d | 张雨濛 [25%] | 2h | 2h |
| 29 | 2.1.2 | 总体功能需求用例图和用例表 | manual | 1d | 2020-03-21 A | 2020-03-21 A |  | 100% |  |  | 2020-03-21 | 2020-03-21 | 1d | 胡俊涛 [25%] | 2h | 2h |
| 30 | 2.1.3 | 讨论敲定可视化用例与其他细节 | manual | 1d | 2020-03-22 A | 2020-03-22 A |  | 100% |  |  | 2020-03-22 | 2020-03-22 | 1d | 暴明坤 [12%]; 胡俊涛 [12%]; 叶柏威 [12%] | 2.88h | 2.88h |
| 31 | 2.1.4 | 可视化需求的用例文档框架 | manual | 1d | 2020-03-22 A | 2020-03-22 A |  | 100% |  |  | 2020-03-22 | 2020-03-22 | 1d | 叶柏威 [12%] | 0.96h | 0.96h |
| 32 | 2.1.5 | 飞书相关的用例文档 | manual | 1d | 2020-03-24 A | 2020-03-24 A |  | 100% |  |  | 2020-03-24 | 2020-03-24 | 1d | 暴明坤 [12%] | 0.96h | 0.96h |
| 33 | 2.1.6 | 钉钉相关的用例文档 | manual | 1d | 2020-03-25 A | 2020-03-25 A |  | 100% |  |  | 2020-03-25 | 2020-03-25 | 1d | 刘子渊 [12%] | 0.96h | 0.96h |
| 34 | 2.1.7 | 需求说明书内容整合 | manual | 1d | 2020-03-25 A | 2020-03-25 A |  | 100% |  |  | 2020-03-25 | 2020-03-25 | 1d | 张雨濛 [12%] | 0.96h | 0.96h |
| 35 | 2.2 | 项目计划书补充 | manual | 1d | 2020-03-25 A | 2020-03-25 A | 13 | 100% |  |  | 2020-03-25 | 2020-03-25 | 1d | 张雨濛 [24%] | 1.92h | 1.92h |
| 36 | 2.3 | ppt制作与整合 | manual | 2d | 2020-03-26 A | 2020-03-27 A | 27 | 100% |  |  | 2020-03-26 | 2020-03-27 | 2d | 暴明坤 [6%]; 夏欣怡 [6%] | 3.84h | 3.84h |
| 37 | 2.4 | ppt讲解 | manual | 1d | 2020-03-30 A | 2020-03-30 A | 36 | 100% |  |  | 2020-03-30 | 2020-03-30 | 1d | 暴明坤 [12%]; 夏欣怡 [12%] | 1.92h | 1.92h |
| 38 | 2.5 | 线上会议（1） | manual | 1d | 2020-03-27 A | 2020-03-27 A |  | 100% |  |  | 2020-03-27 | 2020-03-27 | 1d | 暴明坤 [12%]; 胡俊涛 [12%]; 刘子渊 [12%]; 夏欣怡 [12%]; 叶柏威 [12%]; 张雨濛 [12%] | 5.76h | 5.76h |
| 39 | 2.6 | **其他工作-1** |  | 5d | 2020-03-23 A | 2020-03-27 A |  | 100% |  |  | 2020-03-23 | 2020-03-27 | 5d |  | 9.12h | 9.12h |
| 40 | 2.6.1 | 课程学习 | manual | 1d | 2020-03-27 A | 2020-03-27 A |  | 100% |  |  | 2020-03-27 | 2020-03-27 | 1d | 暴明坤 [12%]; 胡俊涛 [12%]; 刘子渊 [12%]; 夏欣怡 [12%]; 叶柏威 [12%]; 张雨濛 [12%] | 5.76h | 5.76h |
| 41 | 2.6.2 | 查询对比飞书和钉钉消息相关文档 | manual | 3d | 2020-03-23 A | 2020-03-25 A |  | 100% |  |  | 2020-03-23 | 2020-03-25 | 3d | 胡俊涛 [4%] | 0.96h | 0.96h |
| 42 | 2.6.3 | 调研钉钉具体 API | manual | 3d | 2020-03-25 A | 2020-03-27 A |  | 100% |  |  | 2020-03-25 | 2020-03-27 | 3d | 刘子渊 [4%] | 0.96h | 0.96h |
| 43 | 2.6.4 | 实验6-8学习整理 | manual | 3d | 2020-03-23 A | 2020-03-25 A |  | 100% |  |  | 2020-03-23 | 2020-03-25 | 3d | 夏欣怡 [6%] | 1.44h | 1.44h |
| 44 | 2.7 | **需求评审单设计** |  | 1d | 2020-03-21 | 2020-03-21 |  | 100% | 2020-04-01 | 2020-04-03 | 2020-03-21 | 2020-03-21 | 1d |  | 8.16h | 8.16h |
| 45 | 2.7.1 | 线上会议(2) | manual | 1d | 2020-04-01 A | 2020-04-01 A |  | 100% |  |  | 2020-04-01 | 2020-04-01 | 1d | 胡俊涛 [6%]; 刘子渊 [6%]; 夏欣怡 [6%]; 叶柏威 [6%]; 张雨濛 [6%] | 2.4h | 2.4h |
| 46 | 2.7.2 | 需求评审单初步设计 | manual | 1d | 2020-04-01 A | 2020-04-01 A |  | 100% |  |  | 2020-04-01 | 2020-04-01 | 1d | 张雨濛 [12%] | 0.96h | 0.96h |
| 47 | 2.7.3 | ppt制作与整合 | manual | 2d | 2020-04-02 A | 2020-04-03 A |  | 100% |  |  | 2020-04-02 | 2020-04-03 | 2d | 夏欣怡 [6%]; 叶柏威 [6%] | 1.92h | 1.92h |
| 48 | 2.7.4 | ppt讲解 | manual | 1d | 2020-04-03 A | 2020-04-03 A |  | 100% |  |  | 2020-04-03 | 2020-04-03 | 1d | 胡俊涛 [12%]; 夏欣怡 [12%]; 叶柏威 [12%] | 2.88h | 2.88h |
| 49 | 2.8 | **其他工作-2** |  | 8d | 2020-03-27 A | 2020-04-03 A |  | 100% |  |  | 2020-03-27 | 2020-04-03 | 6d |  | 12.8h | 12.8h |
| 50 | 2.8.1 | 细化需求修改需求说明书 | manual | 1d | 2020-04-01 A | 2020-04-01 A | 27 | 100% |  |  | 2020-04-01 | 2020-04-01 | 1d | 胡俊涛 [24%]; 刘子渊 [12%] | 2.88h | 2.88h |
| 51 | 2.8.2 | 需求说明书整合 | manual | 2d | 2020-04-02 A | 2020-04-03 A | 50 | 100% |  |  | 2020-04-02 | 2020-04-03 | 2d | 张雨濛 [6%] | 0.96h | 0.96h |
| 52 | 2.8.3 | 修改文档命名规范 | manual | 1d | 2020-04-02 A | 2020-04-02 A |  | 100% |  |  | 2020-04-02 | 2020-04-02 | 1d | 夏欣怡 [3%]; 叶柏威 [3%] | 0.48h | 0.48h |
| 53 | 2.8.4 | 图表节点和Markdown节点原型开发 | manual | 3d | 2020-03-30 A | 2020-04-01 A |  | 100% |  |  | 2020-03-30 | 2020-04-01 | 3d | 叶柏威 [8%] | 1.92h | 1.92h |
| 54 | 2.8.5 | 会议及汇报记录 | manual | 5d | 2020-03-27 A | 2020-04-02 A |  | 100% |  |  | 2020-03-27 | 2020-04-02 | 5d | 张雨濛 [2%] | 0.8h | 0.8h |
| 55 | 2.8.6 | 课程学习 | manual | 1d | 2020-04-03 A | 2020-04-03 A |  | 100% |  |  | 2020-04-03 | 2020-04-03 | 1d | 暴明坤 [12%]; 胡俊涛 [12%]; 刘子渊 [12%]; 夏欣怡 [12%]; 叶柏威 [12%]; 张雨濛 [12%] | 5.76h | 5.76h |

| ID | WBS | Task | Type | Duration | Start | Finish | Complete | Baseline start | Baseline finish | Baseline duration | Resources | Work | Actual work |
| --- | --- | --- | --- | --- | --- | --- | --- | --- | --- | --- | --- | --- | --- |
| 56 | 3 | **软件需求评审** |  | 7d | 2020-04-04 A | 2020-04-10 A | 100% | 2020-04-04 | 2020-04-10 | 5d |  | 29.84h | 29.84h |
| 57 | 3.1 | 线上会议(1) | manual | 1d | 2020-04-04 A | 2020-04-04 A | 100% | 2020-04-04 | 2020-04-04 | 1d | 暴明坤 [12%]; 胡俊涛 [12%]; 刘子渊 [12%]; 夏欣怡 [12%]; 叶柏威 [12%]; 张雨濛 [12%] | 5.76h | 5.76h |
| 58 | 3.2 | **对H、G组的需求评审与交流** |  | 3d | 2020-04-06 A | 2020-04-08 A | 100% | 2020-04-06 | 2020-04-08 | 3d |  | 7.2h | 7.2h |
| 59 | 3.2.1 | 评审H组需求说明文档 | manual | 1d | 2020-04-06 A | 2020-04-06 A | 100% | 2020-04-06 | 2020-04-06 | 1d | 胡俊涛 [12%] | 0.96h | 0.96h |
| 60 | 3.2.2 | 评审G组需求说明文档用例、图与RUCM设计 | manual | 1d | 2020-04-07 A | 2020-04-07 A | 100% | 2020-04-07 | 2020-04-07 | 1d | 叶柏威 [12%] | 0.96h | 0.96h |
| 61 | 3.2.3 | 评审H组和G组需求说明文档非功能需求 | manual | 1d | 2020-04-07 A | 2020-04-07 A | 100% | 2020-04-07 | 2020-04-07 | 1d | 刘子渊 [12%] | 0.96h | 0.96h |
| 62 | 3.2.4 | 同H组交流评审意见 | manual | 1d | 2020-04-07 A | 2020-04-07 A | 100% | 2020-04-07 | 2020-04-07 | 1d | 刘子渊 [18%] | 1.44h | 1.44h |
| 63 | 3.2.5 | 评审H组和G组需求说明文档语言文字问题 | manual | 1d | 2020-04-07 A | 2020-04-07 A | 100% | 2020-04-07 | 2020-04-07 | 1d | 夏欣怡 [18%] | 1.44h | 1.44h |
| 64 | 3.2.6 | 评审H组和G组需求说明文档格式问题 | manual | 1d | 2020-04-07 A | 2020-04-07 A | 100% | 2020-04-07 | 2020-04-07 | 1d | 张雨濛 [12%] | 0.96h | 0.96h |
| 65 | 3.2.7 | 整合对H组和G组的评审意见 | manual | 1d | 2020-04-08 A | 2020-04-08 A | 100% | 2020-04-08 | 2020-04-08 | 1d | 张雨濛 [6%] | 0.48h | 0.48h |
| 66 | 3.3 | **对A、B组评审意见的交流与修改** |  | 2d | 2020-04-09 A | 2020-04-10 A | 100% | 2020-04-09 | 2020-04-10 | 2d |  | 6.32h | 6.32h |
| 67 | 3.3.1 | 需求说明书修改用例表 | manual | 1d | 2020-04-09 A | 2020-04-09 A | 100% | 2020-04-09 | 2020-04-09 | 1d | 胡俊涛 [31%] | 2.48h | 2.48h |
| 68 | 3.3.2 | 修改格式、用例表、语言逻辑问题 | manual | 1d | 2020-04-09 A | 2020-04-09 A | 100% | 2020-04-09 | 2020-04-09 | 1d | 叶柏威 [18%] | 1.44h | 1.44h |
| 69 | 3.3.3 | 需求说明书整合并修改格式 | manual | 1d | 2020-04-10 A | 2020-04-10 A | 100% | 2020-04-10 | 2020-04-10 | 1d | 张雨濛 [12%] | 0.96h | 0.96h |
| 70 | 3.3.4 | 修改部分用例表 | manual | 1d | 2020-04-10 A | 2020-04-10 A | 100% | 2020-04-10 | 2020-04-10 | 1d | 刘子渊 [12%] | 0.96h | 0.96h |
| 71 | 3.3.5 | 整合对A组和B组的评审反馈 | manual | 1d | 2020-04-10 A | 2020-04-10 A | 100% | 2020-04-10 | 2020-04-10 | 1d | 张雨濛 [6%] | 0.48h | 0.48h |
| 72 | 3.4 | ppt制作与整合 | manual | 1d | 2020-04-10 A | 2020-04-10 A | 100% | 2020-04-10 | 2020-04-10 | 1d | 暴明坤 [12%]; 叶柏威 [12%] | 1.92h | 1.92h |
| 73 | 3.5 | ppt讲解 | manual | 1d | 2020-04-10 A | 2020-04-10 A | 100% | 2020-04-10 | 2020-04-10 | 1d | 暴明坤 [12%]; 刘子渊 [12%]; 叶柏威 [12%] | 2.88h | 2.88h |
| 74 | 3.6 | **其他工作** |  | 1d | 2020-04-10 A | 2020-04-10 A | 100% | 2020-04-10 | 2020-04-10 | 1d |  | 5.76h | 5.76h |
| 75 | 3.6.1 | 课程学习 | manual | 1d | 2020-04-10 A | 2020-04-10 A | 100% | 2020-04-10 | 2020-04-10 | 1d | 暴明坤 [12%]; 胡俊涛 [12%]; 刘子渊 [12%]; 夏欣怡 [12%]; 叶柏威 [12%]; 张雨濛 [12%] | 5.76h | 5.76h |
| 76 | 4 | **软件需求复评审** |  | 14d | 2020-04-11 A | 2020-04-24 A | 100% | 2020-04-11 | 2020-04-24 | 10d |  | 41.8h | 41.8h |
| 77 | 4.1 | 线上会议(1) | manual | 1d | 2020-04-11 A | 2020-04-11 A | 100% | 2020-04-11 | 2020-04-11 | 1d | 暴明坤 [12%]; 胡俊涛 [12%]; 刘子渊 [12%]; 夏欣怡 [12%]; 叶柏威 [12%]; 张雨濛 [12%] | 5.76h | 5.76h |
| 78 | 4.2 | **对A、B组的需求评审与交流** |  | 3d | 2020-04-13 A | 2020-04-15 A | 100% | 2020-04-13 | 2020-04-15 | 3d |  | 5.28h | 5.28h |
| 79 | 4.2.1 | 评审A组需求说明文档 | manual | 1d | 2020-04-13 A | 2020-04-13 A | 100% | 2020-04-13 | 2020-04-13 | 1d | 胡俊涛 [12%] | 0.96h | 0.96h |
| 80 | 4.2.2 | 评审B组需求说明文档用例、图与RUCM设计 | manual | 1d | 2020-04-13 A | 2020-04-13 A | 100% | 2020-04-13 | 2020-04-13 | 1d | 叶柏威 [12%] | 0.96h | 0.96h |
| 81 | 4.2.3 | 评审A组和B组需求说明文档语言文字问题 | manual | 1d | 2020-04-14 A | 2020-04-14 A | 100% | 2020-04-14 | 2020-04-14 | 1d | 夏欣怡 [12%] | 0.96h | 0.96h |
| 82 | 4.2.4 | 评审A组和B组需求说明文档中非功能需求 | manual | 1d | 2020-04-14 A | 2020-04-14 A | 100% | 2020-04-14 | 2020-04-14 | 1d | 刘子渊 [12%] | 0.96h | 0.96h |
| 83 | 4.2.5 | 评审A组和B组需求说明文档格式问题 | manual | 1d | 2020-04-14 A | 2020-04-14 A | 100% | 2020-04-14 | 2020-04-14 | 1d | 张雨濛 [12%] | 0.96h | 0.96h |
| 84 | 4.2.6 | 整合对A组和B组的评审意见 | manual | 1d | 2020-04-15 A | 2020-04-15 A | 100% | 2020-04-15 | 2020-04-15 | 1d | 张雨濛 [6%] | 0.48h | 0.48h |

| ID | WBS | Task | Type | Duration | Start | Finish | Complete | Remaining | Baseline start | Baseline finish | Baseline duration | Total slack | Resources | Work | Actual work |
| --- | --- | --- | --- | --- | --- | --- | --- | --- | --- | --- | --- | --- | --- | --- | --- |
| 85 | 4.3 | **对G、H组评审意见的交流与修改** |  | 1d | 2020-04-17 A | 2020-04-17 A | 100% |  | 2020-04-17 | 2020-04-17 | 1d |  |  | 10.56h | 10.56h |
| 86 | 4.3.1 | 需求说明书整合并修改格式 | manual | 1d | 2020-04-17 A | 2020-04-17 A | 100% |  | 2020-04-17 | 2020-04-17 | 1d |  | 张雨濛 [12%] | 0.96h | 0.96h |
| 87 | 4.3.2 | 根据H组意见修改语法、格式、用例表、逻辑等问题 | manual | 1d | 2020-04-17 A | 2020-04-17 A | 100% |  | 2020-04-17 | 2020-04-17 | 1d |  | 叶柏威 [30%] | 2.4h | 2.4h |
| 88 | 4.3.3 | 整合对G组和H组的评审反馈 | manual | 1d | 2020-04-17 A | 2020-04-17 A | 100% |  | 2020-04-17 | 2020-04-17 | 1d |  | 张雨濛 [6%] | 0.48h | 0.48h |
| 89 | 4.3.4 | ppt制作与整合 | manual | 1d | 2020-04-17 A | 2020-04-17 A | 100% |  | 2020-04-17 | 2020-04-17 | 1d |  | 暴明坤 [12%]; 刘子渊 [6%] | 1.44h | 1.44h |
| 90 | 4.3.5 | ppt讲解 | manual | 1d | 2020-04-17 A | 2020-04-17 A | 100% |  | 2020-04-17 | 2020-04-17 | 1d |  | 刘子渊 [12%]; 叶柏威 [6%] | 1.44h | 1.44h |
| 91 | 4.3.6 | 线上会议(2) | manual | 1d | 2020-04-17 A | 2020-04-17 A | 100% |  | 2020-04-17 | 2020-04-17 | 1d |  | 暴明坤 [12%]; 胡俊涛 [12%]; 刘子渊 [12%]; 叶柏威 [12%] | 3.84h | 3.84h |
| 92 | 4.4 | **阶段性总结** |  | 3d | 2020-04-22 A | 2020-04-24 A | 100% |  | 2020-04-22 | 2020-04-24 | 3d |  |  | 7.68h | 7.68h |
| 93 | 4.4.1 | 阶段性数据统计与图表制作 | manual | 3d | 2020-04-22 A | 2020-04-24 A | 100% |  | 2020-04-22 | 2020-04-24 | 3d |  | 夏欣怡 [12%] | 2.88h | 2.88h |
| 94 | 4.4.2 | 阶段性线上会议情况表 | manual | 1d | 2020-04-24 A | 2020-04-24 A | 100% |  | 2020-04-24 | 2020-04-24 | 1d |  | 张雨濛 [12%] | 0.96h | 0.96h |
| 95 | 4.4.3 | ppt制作与整合 | manual | 1d | 2020-04-24 A | 2020-04-24 A | 100% |  | 2020-04-24 | 2020-04-24 | 1d |  | 刘子渊 [12%]; 夏欣怡 [12%] | 1.92h | 1.92h |
| 96 | 4.4.4 | ppt讲解 | manual | 1d | 2020-04-24 A | 2020-04-24 A | 100% |  | 2020-04-24 | 2020-04-24 | 1d |  | 夏欣怡 [12%]; 刘子渊 [12%] | 1.92h | 1.92h |
| 97 | 4.5 | **其他工作** |  | 8d | 2020-04-17 A | 2020-04-24 A | 100% |  | 2020-04-17 | 2020-04-24 | 6d |  |  | 12.52h | 12.52h |
| 98 | 4.5.1 | 课程学习(1) | manual | 1d | 2020-04-17 A | 2020-04-17 A | 100% |  | 2020-04-17 | 2020-04-17 | 1d |  | 暴明坤 [12%]; 胡俊涛 [12%]; 刘子渊 [12%]; 夏欣怡 [12%]; 叶柏威 [12%]; 张雨濛 [12%] | 5.76h | 5.76h |
| 99 | 4.5.2 | 课程学习(2) | manual | 1d | 2020-04-24 A | 2020-04-24 A | 100% |  | 2020-04-24 | 2020-04-24 | 1d |  | 暴明坤 [12%]; 胡俊涛 [12%]; 刘子渊 [12%]; 夏欣怡 [12%]; 叶柏威 [12%]; 张雨濛 [12%] | 5.76h | 5.76h |
| 100 | 4.5.3 | 会议及汇报记录 | manual | 6d | 2020-04-19 A | 2020-04-24 A | 100% |  | 2020-04-19 | 2020-04-24 | 0d |  | 张雨濛 [1%] | 1h | 1h |
| 101 | 5 | **软件产品改进与展示** |  | 14d | 2020-04-25 A | 2020-05-08 | 81% | 2.69d | 2020-04-25 | 2020-05-22 | 10d | 0d |  | 32.84h | 14h |
| 102 | 5.1 | **软件产品改进与展示** |  | 5d | 2020-05-04 A | 2020-05-08 | 36% | 3.2d | 2020-05-04 | 2020-05-07 | 1d? | 0d |  | 23.16h | 4.32h |
| 103 | 5.1.1 | 燃尽图基线补充与制作 | manual | 1d | 2020-05-04 A | 2020-05-04 A | 100% |  | 2020-05-04 | 2020-05-04 | 0d |  | 夏欣怡 [12%] | 0.96h | 0.96h |
| 104 | 5.1.2 | 消息聚合部分设计文档 | manual | 1d | 2020-05-04 A | 2020-05-04 A | 100% |  | 2020-05-04 | 2020-05-04 | 0d |  | 刘子渊 [12%] | 0.96h | 0.96h |
| 105 | 5.1.3 | 消息聚合部分时序图 | manual | 1d | 2020-05-04 A | 2020-05-04 A | 100% |  | 2020-05-04 | 2020-05-04 | 0d |  | 刘子渊 [12%] | 0.96h | 0.96h |
| 106 | 5.1.4 | 图形渲染部分时序图 | manual | 1.12d | 2020-05-04 | 2020-05-05 |  |  |  |  |  |  | 叶柏威 [12%] | 1.08h |  |
| 107 | 5.1.5 | Node-RED架构图 | manual | 1d | 2020-05-07 A | 2020-05-07 A | 100% |  | 2020-05-07 | 2020-05-07 | 0d |  | 胡俊涛 [18%] | 1.44h | 1.44h |
| 108 | 5.1.6 | 个人阶段性总结 | manual | 2d | 2020-05-07 | 2020-05-08 |  |  |  |  |  |  | 暴明坤 [6%]; 胡俊涛 [6%]; 刘子渊 [6%]; 夏欣怡 [6%]; 叶柏威 [6%]; 张雨濛 [6%] | 5.76h |  |
| 109 | 5.1.7 | ppt制作与整合 | manual | 2d | 2020-05-07 | 2020-05-08 |  |  |  |  |  |  | 胡俊涛 [18%]; 刘子渊 [6%]; 夏欣怡 [6%] | 4.8h |  |
| 110 | 5.1.8 | ppt讲解 | manual | 1d | 2020-05-08 | 2020-05-08 |  |  |  |  |  |  | 暴明坤 [12%]; 胡俊涛 [6%]; 刘子渊 [12%]; 夏欣怡 [12%]; 叶柏威 [6%]; 张雨濛 [6%] | 4.32h |  |
| 111 | 5.1.9 | 线上会议(1) | manual | 1d | 2020-05-08 | 2020-05-08 |  |  |  |  |  |  | 暴明坤 [6%]; 胡俊涛 [6%]; 刘子渊 [6%]; 夏欣怡 [6%]; 叶柏威 [6%]; 张雨濛 [6%] | 2.88h |  |

| ID | WBS | Task | Type | Duration | Start | Finish | Complete | Baseline start | Baseline finish | Baseline duration | Total slack | Resources | Work | Actual work |
| --- | --- | --- | --- | --- | --- | --- | --- | --- | --- | --- | --- | --- | --- | --- |
| 112 | 5.2 | **其他工作** |  | 14d | 2020-04-25 A | 2020-05-08 A | 100% | 2020-04-25 | 2020-05-08 | 0d |  |  | 9.68h | 9.68h |
| 113 | 5.2.1 | 会议及汇报记录 | manual | 11d | 2020-04-25 A | 2020-05-08 A | 100% | 2020-04-25 | 2020-05-08 | 0d |  | 张雨濛 [1%] | 0.88h | 0.88h |
| 114 | 5.2.2 | 学习 node-red 开发 | manual | 5d | 2020-04-25 A | 2020-04-30 A | 100% | 2020-04-25 | 2020-04-30 | 0d |  | 刘子渊 [5%] | 2h | 2h |
| 115 | 5.2.3 | 飞书节点开发 | manual | 5d | 2020-04-25 A | 2020-04-30 A | 100% | 2020-04-25 | 2020-04-30 | 0d |  | 暴明坤 [10%] | 4h | 4h |
| 116 | 5.2.4 | 图表渲染节点开发 | manual | 5d | 2020-04-25 A | 2020-04-30 A | 100% | 2020-04-25 | 2020-04-30 | 0d |  | 叶柏威 [7%] | 2.8h | 2.8h |
| 117 | 6 | **软件测试分析** |  | 12d | 2020-05-04 | 2020-05-15 |  | 2020-05-23 | 2020-05-29 | 1d? | 0d |  | 122.8h |  |
| 118 | 6.1 | **软件开发整合测试文档等进度交流讨论** |  | 7d | 2020-05-09 | 2020-05-15 |  | 2020-03-20 | 2020-03-20 | 1d? | 0d |  | 31.68h |  |
| 119 | 6.1.1 | 线上会议(1) | manual | 1d | 2020-05-09 | 2020-05-09 |  |  |  |  |  | 暴明坤 [6%]; 胡俊涛 [6%]; 刘子渊 [6%]; 夏欣怡 [6%]; 叶柏威 [6%]; 张雨濛 [6%] | 2.88h |  |
| 120 | 6.1.2 | 线上会议(2) | manual | 1d | 2020-05-10 | 2020-05-10 |  |  |  |  |  | 暴明坤 [6%]; 胡俊涛 [6%]; 刘子渊 [6%]; 夏欣怡 [6%]; 叶柏威 [6%]; 张雨濛 [6%] | 2.88h |  |
| 121 | 6.1.3 | 线上会议(3) | manual | 1d | 2020-05-11 | 2020-05-11 |  |  |  |  |  | 暴明坤 [6%]; 胡俊涛 [6%]; 刘子渊 [6%]; 夏欣怡 [6%]; 叶柏威 [6%]; 张雨濛 [6%] | 2.88h |  |
| 122 | 6.1.4 | 线上会议(4) | manual | 1d | 2020-05-12 | 2020-05-12 |  |  |  |  |  | 暴明坤 [6%]; 胡俊涛 [6%]; 刘子渊 [6%]; 夏欣怡 [6%]; 叶柏威 [6%]; 张雨濛 [6%] | 2.88h |  |
| 123 | 6.1.5 | 线上会议(5) | manual | 1d | 2020-05-13 | 2020-05-13 |  |  |  |  |  | 暴明坤 [24%]; 胡俊涛 [24%]; 刘子渊 [24%]; 夏欣怡 [24%]; 叶柏威 [24%]; 张雨濛 [24%] | 11.52h |  |
| 124 | 6.1.6 | 线上会议(6) | manual | 1d | 2020-05-14 | 2020-05-14 |  |  |  |  |  | 暴明坤 [6%]; 胡俊涛 [6%]; 刘子渊 [6%]; 夏欣怡 [6%]; 叶柏威 [6%]; 张雨濛 [6%] | 2.88h |  |
| 125 | 6.1.7 | 线上会议(7) | manual | 1d | 2020-05-15 | 2020-05-15 |  |  |  |  |  | 暴明坤 [12%]; 胡俊涛 [12%]; 刘子渊 [12%]; 夏欣怡 [12%]; 叶柏威 [12%]; 张雨濛 [12%] | 5.76h |  |
| 126 | 6.2 | **飞书机器人demo开发** |  | 5d | 2020-05-11 | 2020-05-15 |  |  |  |  | 0d |  | 11.52h |  |
| 127 | 6.2.1 | demo构思设计 | manual | 2d | 2020-05-11 | 2020-05-12 |  |  |  |  |  | 夏欣怡 [6%]; 张雨濛 [6%] | 1.92h |  |
| 128 | 6.2.2 | demo定时CPU图生成功能 | manual | 2d | 2020-05-13 | 2020-05-14 |  |  |  |  |  | 张雨濛 [6%] | 0.96h |  |
| 129 | 6.2.3 | demo飞书bot节点的接口交流与功能修改 | manual | 2d | 2020-05-13 | 2020-05-14 |  |  |  |  |  | 暴明坤 [6%]; 夏欣怡 [6%] | 1.92h |  |
| 130 | 6.2.4 | demo功能实现与简单测试 | manual | 2d | 2020-05-14 | 2020-05-15 |  |  |  |  |  | 夏欣怡 [30%]; 张雨濛 [12%] | 6.72h |  |
| 131 | 6.3 | **node-red节点开发** |  | 7d | 2020-05-04 | 2020-05-10 |  |  |  |  | 0d |  | 50.8h |  |
| 132 | 6.3.1 | 图表渲染节点开发 | manual | 7d | 2020-05-04 | 2020-05-10 |  |  |  |  |  | 叶柏威 [17%] | 9.52h |  |
| 133 | 6.3.2 | 模板渲染及其他辅助节点开发 | manual | 3d | 2020-05-04 | 2020-05-06 |  |  |  |  |  | 胡俊涛 [40%] | 9.6h |  |
| 134 | 6.3.3 | 消息聚集及其他辅助节点开发 | manual | 4d | 2020-05-04 | 2020-05-07 |  |  |  |  |  | 暴明坤 [45%] | 14.4h |  |
| 135 | 6.3.4 | 飞书目标操作节点开发 | manual | 4d | 2020-05-04 | 2020-05-07 |  |  |  |  |  | 刘子渊 [54%] | 17.28h |  |

| ID | WBS | Task | Type | Duration | Start | Finish | Predecessors | Complete | Remaining | Baseline start | Baseline finish | Baseline duration | Total slack | Resources | Work | Actual work |
| --- | --- | --- | --- | --- | --- | --- | --- | --- | --- | --- | --- | --- | --- | --- | --- | --- |
| 136 | 6.4 | **node-red节点测试设计与自测** |  | 5d | 2020-05-11 | 2020-05-15 |  |  |  |  |  |  | 0d |  | 26.4h |  |
| 137 | 6.4.1 | 测试所开发的节点 | manual | 1d | 2020-05-13 | 2020-05-13 |  |  |  |  |  |  |  | 胡俊涛 [60%] | 4.8h |  |
| 138 | 6.4.2 | 测试所开发的节点 | manual | 3d | 2020-05-11 | 2020-05-13 |  |  |  |  |  |  |  | 暴明坤 [40%] | 9.6h |  |
| 139 | 6.4.3 | 测试所开发的节点 | manual | 2d | 2020-05-12 | 2020-05-13 |  |  |  |  |  |  |  | 叶柏威 [21%] | 3.36h |  |
| 140 | 6.4.4 | 测试所开发的节点 | manual | 3d | 2020-05-11 | 2020-05-13 |  |  |  |  |  |  |  | 刘子渊 [32%] | 7.68h |  |
| 141 | 6.4.5 | 测试飞书demo | manual | 1d | 2020-05-15 | 2020-05-15 |  |  |  |  |  |  |  | 夏欣怡 [12%] | 0.96h |  |
| 142 | 6.5 | ppt制作 | manual | 1d | 2020-05-15 | 2020-05-15 |  |  |  |  |  |  |  | 夏欣怡 [6%]; 张雨濛 [6%] | 0.96h |  |
| 143 | 6.6 | ppt讲解 | manual | 1d | 2020-05-15 | 2020-05-15 |  |  |  |  |  |  |  | 夏欣怡 [6%] | 0.48h |  |
| 144 | 6.7 | **其他工作** |  | 6d | 2020-05-10 | 2020-05-15 |  |  |  |  |  |  | 0d |  | 0.96h |  |
| 145 | 6.7.1 | 会议及汇报记录 | manual | 6d | 2020-05-10 | 2020-05-15 |  |  |  |  |  |  |  | 张雨濛 [2%] | 0.96h |  |
| 146 | 7 | **软件测试评审** |  | 1d? | 2020-05-09 | 2020-05-09 |  |  |  | 2020-05-30 | 2020-06-05 | 1d? | 0d |  |  |  |
| 147 | 7.1 | 软件测试评审 | manual | 1d? | 2020-05-09 | 2020-05-09 |  |  |  | 2020-03-20 | 2020-03-20 | 1d? |  |  |  |  |
| 148 | 8 | **软件测试复评审** |  | 1d? | 2020-03-20 | 2020-03-20 |  |  |  | 2020-06-06 | 2020-06-12 | 1d? | 0d |  |  |  |
| 149 | 8.1 | 软件测试复评审 | manual | 1d? | 2020-03-20 | 2020-03-20 |  |  |  | 2020-03-20 | 2020-03-20 | 1d? |  |  |  |  |
| 150 | 9 | **软件演示与测评** |  | 1d? | 2020-03-20 | 2020-03-20 |  |  |  | 2020-03-20 | 2020-03-20 | 1d? | 0d |  |  |  |
| 151 | 9.1 | 软件演示与测评 | manual | 1d? | 2020-03-20 | 2020-03-20 |  |  |  | 2020-03-20 | 2020-03-20 | 1d? |  |  |  |  |
| 152 | 10 | **软件进度计划与控制** |  | 42d | 2020-03-19 A | 2020-04-29 |  | 67% | 14d | 2020-03-19 | 2020-05-01 | 32d | 0d |  | 22.08h | 14.88h |
| 153 | 10.1 | 飞书项目进度管理共享文档制作 | manual | 2d | 2020-03-19 A | 2020-03-20 A |  | 100% |  | 2020-03-19 | 2020-03-20 | 2d |  | 夏欣怡 [6%] | 0.96h | 0.96h |
| 154 | 10.2 | 填写并汇总制作项目project v1.0.0 | manual | 1d | 2020-03-26 A | 2020-03-26 A | 153 | 100% |  | 2020-03-26 | 2020-03-26 | 1d |  | 夏欣怡 [12%]; 暴明坤 [6%]; 胡俊涛 [6%]; 刘子渊 [6%]; 叶柏威 [6%]; 张雨濛 [6%] | 3.36h | 3.36h |
| 155 | 10.3 | 填写并汇总制作项目project v2.0.0 | manual | 2d | 2020-04-02 A | 2020-04-03 A | 154 | 100% |  | 2020-04-02 | 2020-04-03 | 2d |  | 胡俊涛 [3%]; 刘子渊 [3%]; 夏欣怡 [6%]; 叶柏威 [3%]; 张雨濛 [3%]; 暴明坤 [3%] | 3.36h | 3.36h |
| 156 | 10.4 | 填写并汇总更新项目project v3.0.0 | manual | 2d | 2020-04-10 A | 2020-04-11 A | 155 | 100% |  | 2020-04-10 | 2020-04-11 | 2d |  | 胡俊涛 [3%]; 刘子渊 [3%]; 夏欣怡 [6%]; 叶柏威 [3%]; 张雨濛 [3%]; 暴明坤 [3%] | 3.36h | 3.36h |
| 157 | 10.5 | 填写并汇总更新项目project v4.0.0 | manual | 3d | 2020-04-22 A | 2020-04-24 A | 156 | 100% |  | 2020-04-22 | 2020-04-24 | 3d |  | 暴明坤 [2%]; 胡俊涛 [2%]; 刘子渊 [2%]; 夏欣怡 [6%]; 叶柏威 [2%]; 张雨濛 [2%] | 3.84h | 3.84h |
| 158 | 10.6 | 填写并汇总更新项目project v5.0.0 | manual | 3d | 2020-04-25 | 2020-04-27 | 157 |  |  | 2020-04-29 | 2020-05-01 | 0d |  | 暴明坤 [2%]; 胡俊涛 [2%]; 刘子渊 [2%]; 夏欣怡 [6%]; 叶柏威 [2%]; 张雨濛 [2%] | 3.84h |  |
| 159 | 10.7 | 填写并汇总更新项目project v6.0.0 | manual | 2d | 2020-04-28 | 2020-04-29 | 158 |  |  | 2020-05-08 |  | 0d |  | 暴明坤 [3%]; 胡俊涛 [3%]; 刘子渊 [3%]; 夏欣怡 [6%]; 叶柏威 [3%]; 张雨濛 [3%] | 3.36h |  |

| ID | WBS | Task | Type | Duration | Start | Finish | Predecessors | Complete | Remaining | Baseline start | Baseline finish | Baseline duration | Total slack | Resources | Work | Actual work |
| --- | --- | --- | --- | --- | --- | --- | --- | --- | --- | --- | --- | --- | --- | --- | --- | --- |
| 160 | 11 | **配置管理** |  | 1d | 2020-03-26 A | 2020-03-26 A |  | 100% |  | 2020-03-26 | 2020-03-26 | 1d |  |  | 0.96h | 0.96h |
| 161 | 11.1 | 配置管理制作v1.0 | manual | 1d | 2020-03-26 A | 2020-03-26 A |  | 100% |  | 2020-03-26 | 2020-03-26 | 1d |  | 夏欣怡 [6%]; 暴明坤 [6%] | 0.96h | 0.96h |
| 162 | 12 | **工作量估计与统计分析** |  | 52d | 2020-03-25 A | 2020-05-15 |  | 83% | 8.67d | 2020-03-25 | 2020-04-24 | 23d | 0d |  | 18.24h | 15.68h |
| 163 | 12.1 | 工作量统计与分析表格制作 | manual | 1d | 2020-03-25 A | 2020-03-25 A |  | 100% |  | 2020-03-25 | 2020-03-25 | 1d |  | 夏欣怡 [12%] | 0.96h | 0.96h |
| 164 | 12.2 | 工作量统计更新与汇总v1.0.0 | manual | 1d | 2020-03-27 A | 2020-03-27 A | 163 | 100% |  | 2020-03-27 | 2020-03-27 | 1d |  | 暴明坤 [6%]; 胡俊涛 [6%]; 刘子渊 [6%]; 夏欣怡 [12%]; 叶柏威 [6%]; 张雨濛 [6%] | 3.36h | 3.36h |
| 165 | 12.3 | 工作量统计更新与汇总v2.0.0 | manual | 2d | 2020-04-02 A | 2020-04-03 A | 164 | 100% |  | 2020-04-02 | 2020-04-03 | 2d |  | 胡俊涛 [3%]; 刘子渊 [3%]; 夏欣怡 [6%]; 叶柏威 [3%]; 张雨濛 [3%] | 2.88h | 2.88h |
| 166 | 12.4 | 工作量统计更新与汇总v3.0.0 | manual | 2d | 2020-04-10 A | 2020-04-11 A | 165 | 100% |  | 2020-04-10 | 2020-04-11 | 2d |  | 胡俊涛 [3%]; 刘子渊 [3%]; 夏欣怡 [6%]; 叶柏威 [3%]; 张雨濛 [3%]; 暴明坤 [3%] | 3.36h | 3.36h |
| 167 | 12.5 | 工作量统计更新与汇总v4.0.0 | manual | 3d | 2020-04-22 A | 2020-04-24 A | 166 | 100% |  | 2020-04-22 | 2020-04-24 | 3d |  | 暴明坤 [2%]; 胡俊涛 [2%]; 刘子渊 [2%]; 夏欣怡 [6%]; 叶柏威 [2%]; 张雨濛 [2%] | 3.84h | 3.84h |
| 168 | 12.6 | 工作量统计更新与汇总v5.0.0 | manual | 3d | 2020-05-13 A | 2020-05-15 | 167 | 33% | 2d |  |  |  |  | 暴明坤 [2%]; 胡俊涛 [2%]; 刘子渊 [2%]; 夏欣怡 [6%]; 叶柏威 [2%]; 张雨濛 [2%] | 3.84h | 1.28h |
| 169 | 13 | **综合实验分析与总结** |  | 1d? | 2020-03-20 | 2020-03-20 |  |  |  | 2020-03-20 | 2020-03-20 | 1d? | 0d |  |  |  |
| 170 | 13.1 | 综合实验分析与总结 | manual | 1d? | 2020-03-20 | 2020-03-20 |  |  |  | 2020-03-20 | 2020-03-20 | 1d? |  |  |  |  |
